# ProjectExample

Schedule from MS Project, 2024-02-29 to 2024-05-10, costs in €, A marks actual dates.

## Calendars

- Standard: Mon-Fri 08:00-12:00, 13:00-17:00; Sat-Sun off.

## Resources

| Resource | Group | Rate |
| --- | --- | --- |
| Joanne Kelly | Management | 19.23 |
| Riona Carr | Executive | 6.25 |
| Mary Breen | Management | 19.23 |
| Tom Joyce | Office Staff | 6.88 |
| Conf Room | Facilities |  |
| Junior Staff | Office Staff | 3.75 |
| Printing | External |  |

## Schedule

| ID | WBS | Task | Type | Duration | Start | Finish | Predecessors | Complete | Remaining | Baseline start | Baseline finish | Baseline duration | Total slack | Free slack | Constraint | Resources | Work | Actual work | Cost | Baseline cost | Actual cost |
| --- | --- | --- | --- | --- | --- | --- | --- | --- | --- | --- | --- | --- | --- | --- | --- | --- | --- | --- | --- | --- | --- |
| 1 | 1 | **National Health Campaign** |  | 52d? | 2024-02-29 A | 2024-05-10 |  | 17% | 43.19d? | 2024-02-29 | 2024-05-03 | 47d? | 0d |  |  |  | 584h | 136h | 6,010.38 | 6,010.38 | 2,491.54 |
| 2 | 1.1 | **Planning** |  | 11d | 2024-02-29 A | 2024-03-14 |  | 23% | 8.46d | 2024-02-29 | 2024-03-13 | 10d | 7d | 0d |  |  | 104h | 24h | 487.69 | 487.69 | 337.69 |
| 3 | 1.1.1 | Design questionnaire |  | 2d | 2024-02-29 A | 2024-03-01 A |  | 100% |  | 2024-02-29 | 2024-03-01 | 2d |  |  |  | Joanne Kelly | 16h | 16h | 307.69 | 307.69 | 307.69 |
| 4 | 1.1.2 | Type questionnaire |  | 1d | 2024-03-05 A | 2024-03-05 A | 3 | 100% |  | 2024-03-04 | 2024-03-04 | 1d |  |  |  | Junior Staff | 8h | 8h | 30 | 30 | 30 |
| 5 | 1.1.3 | Print questionnaire |  | 7d | 2024-03-06 | 2024-03-14 | 4 |  |  | 2024-03-05 | 2024-03-13 | 7d | 7d | 0d |  | Printing | 56h |  |  |  |  |
| 6 | 1.1.4 | Invite interviewers to briefing meeting |  | 3d | 2024-03-06 | 2024-03-08 | 5SS |  |  | 2024-03-05 | 2024-03-07 | 3d | 11d | 0d |  | Riona Carr | 24h |  | 150 | 150 |  |
| 7 | 1.1.5 | Survey planning complete | milestone | 0d | 2024-03-08 | 2024-03-08 | 6 |  |  | 2024-03-07 | 2024-03-07 | 0d | 11d |  |  |  |  |  |  |  |  |
| 8 | 1.2 | **Briefing Setup** |  | 10d? | 2024-03-15 | 2024-03-28 | 2 |  |  | 2024-03-14 | 2024-03-27 | 10d? | 7d | 0d |  |  | 96h |  | 525 | 525 |  |
| 9 | 1.2.1 | Book Conference Room |  | 1d | 2024-03-15 | 2024-03-15 |  |  |  | 2024-03-14 | 2024-03-14 | 1d | 7d | 0d |  | Tom Joyce | 8h |  | 55 | 55 |  |
| 10 | 1.2.2 | Contact interviewing locations |  | 2d | 2024-03-15 | 2024-03-18 | 9SS |  |  | 2024-03-14 | 2024-03-15 | 2d | 7d | 0d |  | Tom Joyce | 16h |  | 110 | 110 |  |
| 11 | 1.2.3 | Prepare rosters |  | 4d | 2024-03-19 | 2024-03-22 | 10 |  |  | 2024-03-18 | 2024-03-21 | 4d | 7d | 0d |  | Tom Joyce | 32h |  | 220 | 220 |  |
| 12 | 1.2.4 | Prepare packs for each interviewer |  | 3d | 2024-03-25 | 2024-03-27 | 11 |  |  | 2024-03-22 | 2024-03-26 | 3d | 7d | 0d |  | Junior Staff | 24h |  | 90 | 90 |  |
| 13 | 1.2.5 | Briefing Meeting with Interviewers |  | 1d? | 2024-03-28 | 2024-03-28 | 12 |  |  | 2024-03-27 | 2024-03-27 | 1d? | 7d | 0d |  | Conf Room; Riona Carr | 16h |  | 50 | 50 |  |
| 14 | 1.2.6 | Interviewers briefing complete | milestone | 0d | 2024-03-28 | 2024-03-28 | 13 |  |  | 2024-03-27 | 2024-03-27 | 0d | 7d |  |  |  |  |  |  |  |  |
| 15 | 1.3 | **Data Processing** |  | 12d | 2024-03-29 | 2024-04-15 | 8 |  |  | 2024-03-28 | 2024-04-12 | 12d | 7d | 0d |  |  | 176h |  | 997.69 | 997.69 |  |
| 16 | 1.3.1 | Prepare Book-in forms |  | 2d | 2024-03-29 | 2024-04-01 |  |  |  | 2024-03-28 | 2024-03-29 | 2d | 12d | 0d |  | Riona Carr | 16h |  | 100 | 100 |  |
| 17 | 1.3.2 | Check questionnaires |  | 3d | 2024-04-02 | 2024-04-04 | 16 |  |  | 2024-04-01 | 2024-04-03 | 3d | 12d | 5d |  | Junior Staff | 24h |  | 90 | 90 |  |
| 18 | 1.3.3 | Code questionnaires |  | 10d | 2024-03-29 | 2024-04-11 | 17FF |  |  | 2024-03-28 | 2024-04-10 | 10d | 7d | 0d |  | Junior Staff | 80h |  | 300 | 300 |  |
| 19 | 1.3.4 | Input data in computer |  | 3d | 2024-04-09 | 2024-04-11 | 18FS-3d |  |  | 2024-04-08 | 2024-04-10 | 3d | 7d | 0d |  | Junior Staff | 24h |  | 90 | 90 |  |
| 20 | 1.3.5 | Analyse the data |  | 2d | 2024-04-12 | 2024-04-15 | 19 |  |  | 2024-04-11 | 2024-04-12 | 2d | 7d | 0d |  | Joanne Kelly; Tom Joyce | 32h |  | 417.69 | 417.69 |  |
| 21 | 1.3.6 | Data processing complete | milestone | 0d | 2024-04-15 | 2024-04-15 | 20 |  |  | 2024-04-12 | 2024-04-12 | 0d | 7d |  |  |  |  |  |  |  |  |
| 22 | 1.4 | **Interpretation** |  | 19d | 2024-04-16 A | 2024-05-10 | 15 | 47% | 10.13d | 2024-04-15 | 2024-05-03 | 15d | 0d |  |  |  | 208h | 112h | 4,000 | 4,000 | 2,153.85 |
| 23 | 1.4.1 | Prepare presentation |  | 6d | 2024-04-16 | 2024-04-25 |  |  |  | 2024-04-15 | 2024-04-24 | 6d | 11d |  | start no earlier than 2024-04-08 | Mary Breen; Joanne Kelly | 96h |  | 1,846.15 | 1,846.15 |  |
| 24 | 1.4.2 | Prepare research report |  | 7d | 2024-04-25 A | 2024-05-03 A | 23 | 100% |  | 2024-04-25 | 2024-05-03 | 7d |  |  |  | Joanne Kelly; Mary Breen | 112h | 112h | 2,153.85 | 2,153.85 | 2,153.85 |
| 25 | 1.4.3 | Project complete | milestone | 0d | 2024-05-03 | 2024-05-03 | 24 |  |  | 2024-05-03 | 2024-05-03 | 0d | 5d |  |  |  |  |  |  |  |  |
